Schedule from MS Project, 2018-09-17 to 2019-01-31, status date 2019-01-04, 1 hours a day, A marks actual dates.
Microsoft

## Calendars

- PRD2018-G03-Diary: Mon-Fri 20:00-21:00; Sat-Sun 17:00-19:00. Exceptions (off unless hours are given): 2018-10-01 to 2018-10-07 10:00-12:00 (国庆), 2018-10-17 to 2018-10-21 15:00-22:00 (UML工具PPT加班日), 2018-10-24 to 2018-10-28 19:00-22:00 (UML翻转I加班日), 2018-10-31 to 2018-11-04 16:00-22:00 (UML翻转II加班日), 2018-11-10 to 2018-11-12 10:00-23:00 (子计划加班日), 2018-11-19 to 2018-12-06 18:00-22:00 (第一次评审加班), 2018-12-06 to 2019-01-13 16:30-17:00 (周末评审, recurring), 2019-01-01 19:00-21:00 (UML概述加班日).

## Resources

| Resource |
| --- |
| 骆佳俊 |
| 沈启航 |
| 徐哲远 |
| 杨以恒 |
| 叶柏成 |

## Schedule

| ID | WBS | Task | Type | Duration | Start | Finish | Predecessors | Complete | Remaining | Actual start | Actual finish | Total slack | Constraint | Resources | Work | Actual work | Text2 | Text3 | 输出 | 输入 |
| --- | --- | --- | --- | --- | --- | --- | --- | --- | --- | --- | --- | --- | --- | --- | --- | --- | --- | --- | --- | --- |
| 1 | 1 | **软件工程系列课程教学辅助网站系统-项目** |  | 314.21d? | 2018-09-17 19:00 A | 2019-01-31 20:12 |  | 95% | 16.85d? |  |  | 0d |  |  | 618.55h | 551.38h |  |  |  |  |
| 2 | 1.1 | **项目启动** |  | 116d | 2018-09-17 19:00 A | 2018-11-03 17:00 A |  | 100% |  |  |  |  |  |  | 198.68h | 198.68h |  |  |  |  |
| 3 | 1.1.1 | 人员召集 | manual | 1h | 2018-09-17 19:00 A | 2018-09-17 20:00 A |  | 100% |  |  |  |  |  | 沈启航 | 1h | 1h | 课题课程要求 | 人员名单 |  |  |
| 4 | 1.1.2 | 课题选定 |  | 1h | 2018-09-18 20:00 A | 2018-09-18 21:00 A | 3 | 100% |  |  |  |  | start no earlier than 2018-09-18 19:00 | 沈启航; 骆佳俊; 徐哲远; 杨以恒; 叶柏成 | 5h | 5h | 人员名单 | 选题 | 《项目章程》起草 | 课程要求 |
| 5 | 1.1.3 | 《可行性分析》起草 |  | 1d | 2018-10-02 10:00 A | 2018-10-02 11:00 A |  | 100% |  |  |  |  | start no earlier than 2018-10-01 19:00 | 沈启航 | 1h | 1h |  |  | 可行性分析初稿 | 可行性分析模板 |
| 6 | 1.1.4 | 《项目章程》起草 |  | 1h | 2018-10-20 19:00 A | 2018-10-20 20:00 A | 4 | 100% |  |  |  |  | finish no earlier than 2018-10-20 20:00 | 沈启航 [30%] | 0.3h | 0.3h | 课题课程要求 | 项目章程初稿 | 《项目章程》初稿 | 课题选定 |
| 7 | 1.1.5 | **工具学习** |  | 84d | 2018-10-01 19:00 | 2018-10-31 21:00 | 4 | 100% |  | 2018-09-19 20:00 | 2018-11-03 17:00 |  |  |  | 185.38h | 185.38h |  |  |  |  |
| 8 | 1.1.5.1 | Project的学习 | manual | 6h | 2018-10-01 19:00 A | 2018-10-07 12:00 A | 4 | 100% |  |  |  |  | start no earlier than 2018-10-01 19:00 | 骆佳俊 | 6h | 6h |  |  | Project的学习情况 | 学习资料 |
| 9 | 1.1.5.2 | Git的学习 | manual | 1h | 2018-10-02 10:00 A | 2018-10-02 11:00 A | 4 | 100% |  |  |  |  | start no earlier than 2018-10-01 19:00 | 沈启航 | 1h | 1h |  |  | Git的学习情况 | 学习资料 |
| 10 | 1.1.5.3 | AxureRP学习 | manual | 14h | 2018-10-01 19:00 A | 2018-10-07 12:00 A | 4 | 100% |  |  |  |  | start no earlier than 2018-10-01 19:00 | 杨以恒; 徐哲远 | 20h | 20h |  |  | AxureRP学习情况 | 学习资料 |
| 11 | 1.1.5.4 | **UML学习** |  | 83d | 2018-10-10 19:00 | 2018-11-03 17:00 A | 4 | 100% |  | 2018-09-19 20:00 |  |  |  |  | 158.38h | 158.38h |  |  |  |  |
| 12 | 1.1.5.4.1 | 翻转课堂UML概述PPT制作 | manual | 8h | 2018-09-19 20:00 A | 2018-09-24 21:00 A | 4 | 100% |  |  |  |  |  | 骆佳俊; 沈启航; 徐哲远; 杨以恒; 叶柏成 | 37h | 37h |  |  | UML概述翻转PPT | ppt模板 |
| 13 | 1.1.5.4.2 | 翻转课堂UML工具PPT制作以及工具学习 | manual | 13h | 2018-10-17 19:00 A | 2018-10-19 18:00 A | 12 | 100% |  |  |  |  |  | 沈启航 [50%]; 骆佳俊 [50%]; 徐哲远 [50%]; 叶柏成 [50%]; 杨以恒 [50%] | 32.38h | 32.38h |  |  | UML工具PPT | ppt模板 |
| 14 | 1.1.5.4.3 | 翻转课堂UML基础IPPT制作 | manual | 20h | 2018-10-24 19:00 A | 2018-10-31 19:00 A | 13 | 100% |  |  |  |  | start no earlier than 2018-10-24 19:00 | 骆佳俊 [40%]; 沈启航 [40%]; 杨以恒 [40%]; 徐哲远 [40%]; 叶柏成 [40%] | 31h | 31h |  |  | UML基础IPPT | ppt模板 |
| 15 | 1.1.5.4.4 | 翻转课堂UML基础IIPPT制作 | manual | 16h | 2018-10-31 19:00 A | 2018-11-03 17:00 A | 14 | 100% |  |  |  |  | start no earlier than 2018-10-31 19:00 | 沈启航; 骆佳俊; 徐哲远; 叶柏成; 杨以恒 | 58h | 58h |  |  | UML基础II PPT | ppt模板 |
| 16 | 1.1.6 | 启动会议 | manual | 1d | 2018-11-02 16:00 A | 2018-11-02 17:00 A | 6, 15 | 100% |  |  |  |  |  | 骆佳俊; 沈启航; 徐哲远; 杨以恒; 叶柏成 | 6h | 6h |  |  | 开始干活 | 项目章程发表 |
| 17 | 1.2 | **项目计划** |  | 250d | 2018-09-17 20:00 A | 2018-12-06 21:00 A |  | 100% |  |  |  |  |  |  | 154.37h | 154.37h |  |  |  |  |
| 18 | 1.2.1 | 资料申请与完善 |  | 1h | 2018-09-17 20:00 A | 2018-09-17 21:00 A | 3 | 100% |  |  |  |  |  | 骆佳俊 | 1h | 1h |  | 资源 | 资料 | 人员召集 |
| 19 | 1.2.2 | 软硬件环境落实 |  | 9h | 2018-10-03 11:00 A | 2018-10-07 12:00 A | 18 | 100% |  |  |  |  | finish no earlier than 2018-10-07 20:00 | 叶柏成 | 9h | 9h | 小组现有软硬件情况 | 硬件软件环境 | 资料 | 课题选定 |
| 20 | 1.2.3 | 识别项目干系人 |  | 1h | 2018-09-19 20:00 A | 2018-09-19 21:00 A | 4 | 100% |  |  |  |  |  | 骆佳俊 | 1h | 1h |  |  | 干系人表 | 课题选定 |
| 21 | 1.2.4 | 找ISO&GB模板和PPT模板 |  | 3h | 2018-09-20 20:00 A | 2018-09-22 18:00 A | 20 | 100% |  |  |  |  |  | 骆佳俊; 杨以恒 | 4h | 4h |  |  | 模板 | 课题选定 |
| 22 | 1.2.5 | **可行性分析修订** |  | 217d | 2018-10-07 19:00 A | 2018-12-06 20:00 A | 5 | 100% |  |  |  |  |  |  | 8h | 8h |  |  |  |  |
| 23 | 1.2.5.1 | 《可行性报告》v0.1.0 | manual | 1h | 2018-10-07 19:00 A | 2018-10-07 20:00 A | 4 | 100% |  |  |  |  |  | 沈启航 | 1h | 1h |  |  | 《可行性报告》v0.1.0 | 可行性报告模板 |
| 24 | 1.2.5.2 | 《可行性报告》v0.1.1 | manual | 1h | 2018-10-14 19:00 A | 2018-10-14 20:00 A | 23 | 100% |  |  |  |  |  | 沈启航 | 1h | 1h |  |  | 《可行性报告》v0.1.1 | 《可行性报告》v0.1.0 |
| 25 | 1.2.5.3 | 《可行性报告》v0.1.2 | manual | 2h | 2018-11-07 19:00 A | 2018-11-08 20:00 | 24 | 100% |  |  | 2018-11-07 21:00 |  |  | 沈启航 | 2h | 2h |  |  | 《可行性报告》v0.1.2 | 《可行性报告》v0.1.1 |
| 26 | 1.2.5.4 | 《可行性报告》v0.1.3 | manual | 1d | 2018-11-10 19:00 A | 2018-11-10 20:00 A | 25 | 100% |  |  |  |  |  | 徐哲远 | 2h | 2h |  |  | 《可行性报告》v0.1.3 | 《可行性报告》v0.1.2 |
| 27 | 1.2.5.5 | 《可行性报告》v0.1.4 | manual | 1d | 2018-11-28 19:00 A | 2018-11-28 20:00 A | 26 | 100% |  |  |  |  |  | 叶柏成 | 1h | 1h |  |  | 《可行性报告》v0.1.4 | 《可行性报告》v0.1.3 |
| 28 | 1.2.5.6 | 《可行性报告》v0.1.5 | manual | 1d | 2018-12-06 19:00 A | 2018-12-06 20:00 A | 27 | 100% |  |  |  |  |  | 沈启航 | 1h | 1h |  |  | 《可行性报告》v0.1.5 | 《可行性报告》v0.1.4 |
| 29 | 1.2.6 | 《可行性分析》发布 | milestone, manual | 0h | 2018-12-06 19:00 A | 2018-12-06 19:00 A | 28 | 100% |  |  |  |  |  | 沈启航; 骆佳俊; 徐哲远; 杨以恒; 叶柏成 |  |  |  |  | 发布版 | 《可行性报告》v0.1.5 |

| ID | WBS | Task | Type | Duration | Start | Finish | Predecessors | Complete | Actual finish | Constraint | Resources | Work | Actual work | 输出 | 输入 | Text2 | Text3 |
| --- | --- | --- | --- | --- | --- | --- | --- | --- | --- | --- | --- | --- | --- | --- | --- | --- | --- |
| 30 | 1.2.7 | **项目章程修订** |  | 2.67d | 2018-10-21 17:00 A | 2018-10-21 19:40 A | 6 | 100% |  |  |  | 1.07h | 1.07h |  |  |  |  |
| 31 | 1.2.7.1 | 《项目章程》修改v0.1.1 | manual | 1.67h | 2018-10-21 17:00 A | 2018-10-21 18:40 A | 6 | 100% |  |  | 沈启航 [10%]; 杨以恒 [30%] | 0.57h | 0.57h | 《项目章程》v0.1.1 | 《项目章程》起草 |  |  |
| 32 | 1.2.7.2 | 《项目章程》修改v0.1.2 | manual | 1h | 2018-10-21 18:40 A | 2018-10-21 19:40 A | 31 | 100% |  |  | 沈启航 [50%] | 0.5h | 0.5h | 《项目章程》v0.1.2 | 《项目章程》v0.1.1 |  |  |
| 33 | 1.2.8 | 《项目章程》发布 | milestone, manual | 0h | 2018-10-21 19:40 A | 2018-10-21 19:40 A | 32 | 100% |  |  | 骆佳俊; 沈启航; 徐哲远; 杨以恒; 叶柏成 |  |  | 《项目章程》 | 《项目章程》v0.1.2 |  |  |
| 34 | 1.2.9 | **制定需求工程项目计划** |  | 237d | 2018-09-28 19:00 A | 2018-12-06 21:00 A | 6 | 100% |  |  |  | 125.3h | 125.3h |  |  |  |  |
| 35 | 1.2.9.1 | 《需求工程项目计划》起草 | manual | 1h | 2018-09-28 19:00 A | 2018-09-28 20:00 A | 33 | 100% |  | start no earlier than 2018-09-28 19:00 | 沈启航 [50%] | 0.5h | 0.5h | 《需求工程计划》初步 | 《项目章程》 |  |  |
| 36 | 1.2.9.2 | 《需求工程项目计划》修订v0.1.1 | manual | 5h | 2018-09-28 19:00 A | 2018-09-30 18:00 A | 35 | 100% |  |  | 叶柏成; 骆佳俊; 沈启航; 徐哲远; 杨以恒 | 25h | 25h | 《需求工程项目计划》修订v0.1.1 | 《需求工程项目计划》起草 |  |  |
| 37 | 1.2.9.3 | 《需求工程项目计划》修订v0.1.2 | manual | 20h | 2018-10-17 19:00 A | 2018-10-21 20:00 A | 36 | 100% |  |  | 骆佳俊 [50%]; 沈启航 [50%]; 徐哲远 [50%]; 杨以恒 [50%]; 叶柏成 [50%] | 30h | 30h | 《需求工程项目计划》修订v0.1.2 | 《需求工程项目计划》v0.1.1 |  |  |
| 38 | 1.2.9.4 | 《需求工程项目计划》修订v0.1.3 | manual | 7d | 2018-10-26 19:00 A | 2018-10-28 20:00 A | 37 | 100% |  |  | 骆佳俊 [40%]; 沈启航 [60%]; 徐哲远 [60%]; 杨以恒 [60%]; 叶柏成 [60%] | 18.4h | 18.4h | 《需求工程项目计划》修订v0.1.3 | 《需求工程项目计划》v0.1.2 |  |  |
| 39 | 1.2.9.5 | 《需求工程项目计划》修订v0.2.0 | manual | 1h | 2018-10-30 19:00 A | 2018-10-30 20:00 A | 38 | 100% |  |  | 沈启航 [90%] | 0.9h | 0.9h | 《需求工程项目计划》修订v0.2.0 | 《需求工程项目计划》v0.1.3 |  |  |
| 40 | 1.2.9.6 | 《需求工程项目计划》修订v0.2.1 | manual | 2h | 2018-11-04 19:00 A | 2018-11-04 21:00 A | 39 | 100% |  |  | 沈启航 | 2h | 2h | 《需求工程项目计划》修订v0.2.1 | 《需求工程项目计划》v0.2.0 |  |  |
| 41 | 1.2.9.7 | 起草《项目范围管理计划》 | manual | 3h | 2018-11-10 19:00 A | 2018-11-10 22:00 A | 35 | 100% |  |  | 骆佳俊 | 3h | 3h | 《项目范围质量管理》 | 《项目范围质量管理》模板 | 《项目范围质量管理》模板 | 《项目范围质量管理》 |
| 42 | 1.2.9.8 | 起草《项目进度管理计划》 | manual | 3h | 2018-11-10 19:00 A | 2018-11-10 22:00 A | 35 | 100% |  |  | 骆佳俊 | 3h | 3h | 《项目进度管理计划》 | 《项目进度管理计划》模板 | 《项目进度管理计划》模板 | 《项目进度管理计划》 |
| 43 | 1.2.9.9 | 起草《项目成本管理计划》 | manual | 3h | 2018-11-10 19:00 A | 2018-11-10 22:00 A | 35 | 100% |  |  | 骆佳俊 | 3h | 3h | 《项目成本管理》 | 《项目成本管理》模板 | 《项目成本管理》模板 | 《项目成本管理》 |
| 44 | 1.2.9.10 | 起草《项目质量管理计划》 | manual | 3h | 2018-11-10 19:00 A | 2018-11-10 22:00 A | 35 | 100% |  |  | 骆佳俊 | 3h | 3h | 《项目质量管理计划》 | 《项目成本管理》模板 | 《项目成本管理》模板 | 《项目质量管理计划》 |
| 45 | 1.2.9.11 | 起草《人力资源管理计划》 | manual | 3h | 2018-11-10 19:00 A | 2018-11-10 22:00 A | 35 | 100% |  |  | 叶柏成 | 3h | 3h | 《人力资源管理子计划》 | 《人力资源管理子计划》模板 | 《人力资源管理子计划》模板 | 《人力资源管理子计划》 |
| 46 | 1.2.9.12 | 起草《沟通管理子计划》 | manual | 2h | 2018-11-10 19:00 A | 2018-11-10 22:00 | 35 | 100% | 2018-11-10 21:00 |  | 叶柏成 | 2h | 2h | 《沟通管理子计划》 | 《沟通管理子计划》模板 | 《沟通管理子计划》模板 | 《沟通管理子计划》 |
| 47 | 1.2.9.13 | 起草《风险管理子计划》 | manual | 3h | 2018-11-10 19:00 A | 2018-11-10 22:00 A | 35 | 100% |  |  | 叶柏成 | 3h | 3h | 《风险管理子计划》 | 《风险管理子计划》模板 | 《风险管理子计划》模板 | 《风险管理子计划》 |
| 48 | 1.2.9.14 | 起草《采购管理子计划》 | manual | 3h | 2018-11-10 19:00 A | 2018-11-10 22:00 A | 35 | 100% |  |  | 叶柏成 | 2h | 2h | 《采购管理子计划》 | 《采购管理子计划》模板 | 《采购管理子计划》模板 | 《采购管理子计划》 |
| 49 | 1.2.9.15 | 起草《配置管理子计划》 | manual | 2h | 2018-11-10 19:00 A | 2018-11-10 21:00 A | 35 | 100% |  | start no earlier than 2018-11-10 19:00 | 叶柏成 | 2h | 2h | 《配置管理子计划》 | 《配置管理子计划》 | 《配置管理子计划》 | 《配置管理子计划》 |
| 50 | 1.2.9.16 | 《需求工程项目计划》修订v0.3.0 | manual | 2h | 2018-11-11 19:00 A | 2018-11-11 21:00 A | 40, 41, 42, 43, 44, 45, 46, 47, 48, 49 | 100% |  |  | 叶柏成 | 2h | 2h | 《需求工程项目计划》修订v0.3.0 | 《需求工程项目计划》v0.2.1 |  |  |
| 51 | 1.2.9.17 | 《需求工程项目计划》修订v0.3.1 | manual | 2h | 2018-11-12 19:00 A | 2018-11-12 21:00 A | 50 | 100% |  |  | 叶柏成; 沈启航; 骆佳俊 | 6h | 6h | 《需求工程项目计划》修订v0.3.0 | 《需求工程项目计划》v0.3.0 |  |  |
| 52 | 1.2.9.18 | 《需求工程项目计划》修订v0.3.2 | manual | 1d | 2018-11-13 19:00 A | 2018-11-13 20:00 A | 51 | 100% |  |  | 叶柏成 [50%] | 0.5h | 0.5h | 《需求工程项目计划》修订v0.3.2 | 《需求工程项目计划》v0.3.1 |  |  |
| 53 | 1.2.9.19 | 《需求工程项目计划》修订v0.3.3 | manual | 1h | 2018-11-17 19:00 A | 2018-11-18 18:00 A | 52 | 100% |  |  | 叶柏成; 沈启航 | 2h | 2h | 《需求工程项目计划》修订v0.3.3 | 《需求工程项目计划》v0.3.2 |  |  |
| 54 | 1.2.9.20 | 《需求工程项目计划》修订v0.3.4 | manual | 1d | 2018-11-18 18:00 A | 2018-11-18 19:00 A | 53 | 100% |  |  | 叶柏成; 沈启航; 骆佳俊 | 3h | 3h | 《需求工程项目计划》修订v0.3.4 | 《需求工程项目计划》v0.3.3 |  |  |
| 55 | 1.2.9.21 | 《需求工程项目计划》修订v0.3.5 | manual | 1d | 2018-11-19 18:00 A | 2018-11-19 19:00 A | 54 | 100% |  |  | 沈启航; 叶柏成 | 2h | 2h | 《需求工程项目计划》修订v0.3.5 | 《需求工程项目计划》v0.3.4 |  |  |
| 56 | 1.2.9.22 | 《需求工程项目计划》修订v0.3.6 |  | 2d | 2018-11-19 19:00 A | 2018-11-19 21:00 A | 55 | 100% |  |  | 沈启航; 叶柏成; 骆佳俊 | 4h | 4h | 《需求工程项目计划》修订v0.3.6 | 《需求工程项目计划》v0.3.5 |  |  |
| 57 | 1.2.9.23 | 《需求工程项目计划》修订v0.3.7 | manual | 1h | 2018-11-28 19:00 A | 2018-11-28 20:00 A | 56 | 100% |  |  | 叶柏成 | 1h | 1h | 《需求工程项目计划》修订v0.3.7 | 《需求工程项目计划》v0.3.6 |  |  |
| 58 | 1.2.9.24 | 《需求工程项目计划》修订v0.3.8 | manual | 1d | 2018-12-02 19:00 A | 2018-12-02 20:00 A | 57 | 100% |  |  | 叶柏成 | 1h | 1h | 《需求工程项目计划》修订v0.3.8 | 《需求工程项目计划》v0.3.7 |  |  |
| 59 | 1.2.9.25 | 《需求工程项目计划》修订v0.3.9 | manual | 1h | 2018-12-06 19:00 A | 2018-12-06 20:00 A | 58 | 100% |  |  | 沈启航; 叶柏成 | 2h | 2h | 《需求工程项目计划》修订v0.3.9 | 《需求工程项目计划》修订v0.3.8 |  |  |
| 60 | 1.2.9.26 | 《需求工程项目计划》修订v0.3.10 | manual | 1h | 2018-12-06 20:00 A | 2018-12-06 21:00 A | 59 | 100% |  |  | 沈启航 | 1h | 1h |  |  |  |  |
| 61 | 1.2.9.27 | 《质量保证计划》发布 | milestone | 0h | 2018-11-10 22:00 A | 2018-11-10 22:00 A | 44 | 100% |  |  | 叶柏成; 骆佳俊; 沈启航; 徐哲远; 杨以恒 |  |  | 《QA计划》 | 起草《项目质量管理计划》 |  |  |
| 62 | 1.2.10 | 《需求工程项目计划》发布 | milestone | 0h | 2018-12-06 20:00 A | 2018-12-06 20:00 A | 61, 33, 59 | 100% |  | finish no earlier than 2018-11-28 20:00 | 叶柏成; 骆佳俊; 沈启航; 徐哲远; 杨以恒 | 5h | 5h | 《需求工程计划》 | 《需求工程项目计划》修订v0.3.0 |  |  |

| ID | WBS | Task | Type | Duration | Start | Finish | Predecessors | Complete | Remaining | Actual start | Actual finish | Total slack | Constraint | Resources | Work | Actual work | 输出 | 输入 |
| --- | --- | --- | --- | --- | --- | --- | --- | --- | --- | --- | --- | --- | --- | --- | --- | --- | --- | --- |
| 63 | 1.3 | **项目执行** |  | 278d | 2018-10-01 19:00 A | 2019-01-18 21:00 | 2, 17, 16, 29, 34 | 92% | 21.83d |  |  | 0d |  |  | 101.45h | 91.28h |  |  |
| 64 | 1.3.1 | **需求开发** |  | 268d | 2018-10-01 19:00 A | 2019-01-09 20:30 |  | 99% | 3.01d |  |  | 0d |  |  | 93.28h | 91.28h |  |  |
| 65 | 1.3.1.1 | **需求开发第零轮迭代** |  | 250.5d | 2018-10-01 19:00 A | 2018-12-24 21:00 A | 62, 16 | 100% |  |  |  |  |  |  | 16.5h | 16.5h |  |  |
| 66 | 1.3.1.1.1 | 定义产品愿景和项目范围 | manual | 1h | 2018-11-20 19:00 A | 2018-11-20 20:00 A | 54 | 100% |  |  |  |  | start no earlier than 2018-11-20 19:00 | 沈启航 | 1h | 1h | 愿景与范围文档 | 课题选定 |
| 67 | 1.3.1.1.2 | **《愿景与范围》文档** |  | 249d | 2018-10-01 19:00 A | 2018-12-22 20:00 A | 66 | 100% |  |  |  |  |  |  | 6h | 6h | 愿景与范围文档 | 与用户对接 |
| 68 | 1.3.1.1.2.1 | 《愿景与范围》文档V0.1.0 | manual | 1h | 2018-10-01 19:00 A | 2018-10-01 20:00 A | 66 | 100% |  |  |  |  |  | 沈启航 | 1h | 1h | 《愿景与范围》文档V0.1.0 | 《愿景与范围》模板 |
| 69 | 1.3.1.1.2.2 | 《愿景与范围》文档V0.1.1 | manual | 1h | 2018-11-12 19:00 A | 2018-11-14 20:00 | 68 | 100% |  |  | 2018-11-13 21:00 |  |  | 沈启航 | 1h | 1h | 《愿景与范围》文档V0.1.1 | 《愿景与范围》文档V0.1.0 |
| 70 | 1.3.1.1.2.3 | 《愿景与范围》文档V0.1.2 | manual | 1h | 2018-11-23 19:00 A | 2018-11-24 20:00 A | 69 | 100% |  |  |  |  |  | 沈启航 | 1h | 1h | 《愿景与范围》文档V0.1.2 | 《愿景与范围》文档V0.1.1 |
| 71 | 1.3.1.1.2.4 | **《愿景与范围》文档V0.1.3** |  | 9h | 2018-11-30 19:00 | 2018-12-02 20:00 | 70 | 100% |  | 2018-11-20 20:00 | 2018-11-20 21:00 |  |  |  | 1h | 1h | 《愿景与范围》文档V0.1.3 | 《愿景与范围》文档V0.1.2 |
| 72 | 1.3.1.1.2.4.1 | 绘制特性图 | manual | 1h | 2018-11-20 20:00 A | 2018-11-20 21:00 A | 66 | 100% |  |  |  |  |  | 沈启航 | 1h | 1h | 《愿景与范围》文档V0.1.3 | 《愿景与范围》文档V0.1.2 |
| 73 | 1.3.1.1.2.5 | 《愿景与范围》文档V0.1.4 | manual | 1h | 2018-12-05 19:00 A | 2018-12-05 20:00 A | 71 | 100% |  |  |  |  |  | 沈启航 | 1h | 1h | 《愿景与范围》文档V0.1.4 | 《愿景与范围》文档V0.1.3 |
| 74 | 1.3.1.1.2.6 | **《愿景与范围》文档V1.0.0** |  | 1h | 2018-12-22 19:00 A | 2018-12-22 20:00 A | 73 | 100% |  |  |  |  |  |  | 1h | 1h | 《愿景与范围》文档V1.0.0 | 《愿景与范围》文档V0.1.4 |
| 75 | 1.3.1.1.2.6.1 | 绘制上下文图 | manual | 1d | 2018-12-22 19:00 A | 2018-12-22 20:00 A | 66 | 100% |  |  |  |  |  | 沈启航 | 1h | 1h | 上下文图 | 《愿景与范围》文档V0.1.4 |
| 76 | 1.3.1.1.3 | 识别用户类型及其特征 | manual | 1h | 2018-12-24 20:00 A | 2018-12-24 21:00 A | 67, 75, 72 | 100% |  |  |  |  | start no earlier than 2018-11-24 19:00 | 徐哲远 | 1h | 1h | 识别用户文档类型及其特征 | 课题选定 |
| 77 | 1.3.1.1.4 | **为每类用户选出用户代表** |  | 77d | 2018-11-22 19:00 A | 2018-12-22 19:00 A | 76 | 100% |  |  |  |  |  |  | 5h | 5h |  |  |
| 78 | 1.3.1.1.4.1 | **用户分类** |  | 1h | 2018-11-24 20:00 | 2018-11-24 21:00 | 76 | 100% |  | 2018-11-25 19:00 | 2018-12-22 19:00 |  |  |  | 3h | 3h | 《用户群分类》文档 | 课题选定 |
| 79 | 1.3.1.1.4.1.1 | 《用户群分类》V0.1.0 | manual | 1d | 2018-11-25 19:00 A | 2018-11-25 20:00 A | 76 | 100% |  |  |  |  |  | 叶柏成 | 1h | 1h | 《用户群分类》V0.1.0 | 《用户群分类》模板 |
| 80 | 1.3.1.1.4.1.2 | 《用户群分类》V0.1.1 | manual | 1d | 2018-12-19 19:00 A | 2018-12-19 20:00 A | 79 | 100% |  |  |  |  |  | 叶柏成 | 1h | 1h | 《用户群分类》V0.1.1 | 《用户群分类》V0.1.0 |
| 81 | 1.3.1.1.4.1.3 | 《用户群分类》V1.0.0 | manual | 5d | 2018-12-19 20:00 A | 2018-12-22 19:00 A | 80 | 100% |  |  |  |  |  | 叶柏成 [20%] | 1h | 1h | 《用户群分类》V1.0.0 | 《用户群分类》V0.1.1 |
| 82 | 1.3.1.1.4.2 | 确定用户代表 | manual | 1h | 2018-11-22 19:00 A | 2018-11-22 20:00 A | 76 | 100% |  |  |  |  |  | 徐哲远 | 1h | 1h | 确认用户代表 | 课题选定 |
| 83 | 1.3.1.1.4.3 | 设定不同的用户级别 | manual | 1h | 2018-11-23 19:00 A | 2018-11-23 20:00 A | 76 | 100% |  |  |  |  |  | 叶柏成 | 1h | 1h | 设定用户级别 | 课题选定 |
| 84 | 1.3.1.1.5 | 识别系统事件和反应 | manual | 1h | 2018-12-23 16:30 A | 2018-12-24 20:30 A | 77, 82, 83, 81 | 100% |  |  |  |  |  | 骆佳俊 | 1h | 1h | 识别系统事件和反应文档 | 课题选定 |
| 85 | 1.3.1.1.6 | 举办需求访谈 | manual | 1h | 2018-11-24 19:00 A | 2018-11-24 20:00 A | 84 | 100% |  |  |  |  |  | 沈启航 | 1h | 1h | 访谈日志 | 课题选定 |
| 86 | 1.3.1.1.7 | 检查现有系统在需求方面的报告 | manual | 1h | 2018-11-25 19:00 A | 2018-11-25 20:00 A | 85 | 100% |  |  |  |  | start no earlier than 2018-11-25 19:00 | 徐哲远 | 1h | 1h | 报告修订 | 课题选定 |
| 87 | 1.3.1.1.8 | 重用现有需求 | manual | 1h | 2018-11-26 19:00 A | 2018-11-26 20:00 A | 86 | 100% |  |  |  |  | start no earlier than 2018-11-26 19:00 | 杨以恒 | 0.5h | 0.5h | 重用现有需求报告 | 课题选定 |

| ID | WBS | Task | Type | Duration | Start | Finish | Predecessors | Complete | Remaining | Actual start | Actual finish | Total slack | Constraint | Resources | Work | Actual work | 输入 | 输出 |
| --- | --- | --- | --- | --- | --- | --- | --- | --- | --- | --- | --- | --- | --- | --- | --- | --- | --- | --- |
| 88 | 1.3.1.2 | **需求开发第一轮迭代** |  | 73.5d | 2018-11-23 19:00 A | 2018-12-23 20:00 A | 65, 87 | 100% |  |  |  |  |  |  | 56.28h | 56.28h |  |  |
| 89 | 1.3.1.2.1 | 使用需求文档模板 | manual | 1h | 2018-11-26 19:00 A | 2018-11-26 20:00 A | 65 | 100% |  |  |  |  |  | 叶柏成 | 1h | 1h | 需求文档模板 |  |
| 90 | 1.3.1.2.2 | 创建用户界面及技术原型 | manual | 20h | 2018-11-26 19:00 A | 2018-12-20 21:00 A | 89 | 100% |  |  |  |  |  | 骆佳俊; 杨以恒 | 25h | 25h |  | 界面原型 |
| 91 | 1.3.1.2.3 | **举办需求访谈** |  | 6d | 2018-11-25 19:00 A | 2018-11-26 21:00 | 90SS | 100% |  |  | 2018-11-25 20:00 |  |  |  | 6h | 6h |  |  |
| 92 | 1.3.1.2.3.1 | 明确需求来源 | manual | 1h | 2018-11-25 19:00 A | 2018-11-25 20:00 A | 90 | 100% |  |  |  |  |  | 骆佳俊 | 1h | 1h | 需求来源 |  |
| 93 | 1.3.1.2.3.2 | 记录业务规则 | manual | 1h | 2018-11-25 19:00 A | 2018-11-25 20:00 A | 92 | 100% |  |  |  |  |  | 沈启航 | 1h | 1h | 业务规则 |  |
| 94 | 1.3.1.2.3.3 | 记录非功能需求 | manual | 1h | 2018-11-25 19:00 A | 2018-11-25 20:00 A | 93 | 100% |  |  |  |  |  | 徐哲远 | 1h | 1h |  |  |
| 95 | 1.3.1.2.3.4 | 需求评审 | manual | 1h | 2018-11-25 19:00 A | 2018-11-25 20:00 A | 94 | 100% |  |  |  |  |  | 叶柏成 | 1h | 1h |  |  |
| 96 | 1.3.1.2.3.5 | 测试需求 | manual | 1h | 2018-11-25 19:00 A | 2018-11-25 20:00 A | 95 | 100% |  |  |  |  |  | 杨以恒 | 1h | 1h |  |  |
| 97 | 1.3.1.2.3.6 | 定义验收标准 | manual | 1h | 2018-11-25 19:00 A | 2018-11-25 20:00 A | 96 | 100% |  |  |  |  | start no earlier than 2018-11-25 19:00 | 徐哲远 | 1h | 1h |  |  |
| 98 | 1.3.1.2.4 | **建立数据字典** |  | 1h | 2018-11-25 19:00 | 2018-11-25 20:00 | 91, 97 | 100% |  | 2018-11-26 21:00 | 2018-12-22 20:00 |  |  |  | 1.78h | 1.78h |  | 数据字典 |
| 99 | 1.3.1.2.4.1 | 《数据字典》V0.1.0 | manual | 1d | 2018-11-26 21:00 A | 2018-11-26 22:00 A | 91 | 100% |  |  |  |  |  | 叶柏成 | 1h | 1h |  |  |
| 100 | 1.3.1.2.4.2 | 《数据字典》V0.2.0 | manual | 6h | 2018-12-20 19:00 A | 2018-12-22 20:00 A | 99 | 100% |  |  |  |  |  | 叶柏成 [13%] | 0.78h | 0.78h |  |  |
| 101 | 1.3.1.2.5 | **编写《需求规格说明书》** |  | 73.5d | 2018-11-23 19:00 A | 2018-12-23 20:00 A | 98SS | 100% |  |  |  |  |  |  | 19.5h | 19.5h |  |  |
| 102 | 1.3.1.2.5.1 | 编写《需求规格说明书》V0.1.0 | manual | 1h | 2018-11-23 19:00 A | 2018-11-23 20:00 A | 99SS | 100% |  |  |  |  |  | 叶柏成 | 1h | 1h |  |  |
| 103 | 1.3.1.2.5.2 | 编写《需求规格说明书》V0.2.0 | manual | 10.5h | 2018-12-18 19:00 A | 2018-12-23 20:00 A | 102 | 100% |  |  |  |  |  | 叶柏成; 骆佳俊; 沈启航; 徐哲远; 杨以恒 | 18.5h | 18.5h |  |  |
| 104 | 1.3.1.2.6 | **编写《测试用例》** |  | 1h | 2018-12-20 20:00 | 2018-12-20 21:00 | 103 | 100% |  | 2018-11-26 18:30 | 2018-11-26 19:30 |  |  |  | 2h | 2h |  |  |
| 105 | 1.3.1.2.6.1 | App端测试用例 | manual | 1h | 2018-11-26 18:30 A | 2018-11-26 19:30 A | 103 | 100% |  |  |  |  |  | 徐哲远 | 1h | 1h |  |  |
| 106 | 1.3.1.2.6.2 | Web端测试用例 | manual | 1h | 2018-11-26 18:30 A | 2018-11-26 19:30 A | 103 | 100% |  |  |  |  |  | 徐哲远 | 1h | 1h |  |  |
| 107 | 1.3.1.2.7 | 编写《用户手册》 | manual | 1h | 2018-12-21 20:00 A | 2018-12-21 21:00 A | 104 | 100% |  |  |  |  | start no earlier than 2018-11-25 19:00 | 沈启航 | 1h | 1h |  |  |
| 108 | 1.3.1.3 | **需求开发第二轮迭代** |  | 23d | 2018-12-20 19:00 A | 2019-01-09 20:30 | 88, 107 | 95% | 1.18d |  |  | 0d |  |  | 20.5h | 18.5h |  |  |
| 109 | 1.3.1.3.1 | 修改用户界面及技术原型 | manual | 13.5h | 2018-12-24 20:00 A | 2019-01-04 21:00 | 107, 88 | 93% | 1h |  |  |  |  | 杨以恒 | 13.5h | 12.5h |  |  |
| 110 | 1.3.1.3.2 | **举办需求访谈** |  | 1h | 2019-01-08 20:30 | 2019-01-09 20:30 | 109 | 100% |  | 2018-12-29 19:00 | 2019-01-01 20:00 |  |  |  | 4h | 4h |  |  |
| 111 | 1.3.1.3.2.1 | 需求评审 | manual | 1h | 2018-12-29 19:00 A | 2018-12-29 20:00 A | 109SS | 100% |  |  |  |  |  | 徐哲远 | 1h | 1h |  |  |
| 112 | 1.3.1.3.2.2 | 测试需求 | manual | 1h | 2018-12-30 19:00 A | 2018-12-30 20:00 A | 111 | 100% |  |  |  |  |  | 杨以恒 | 1h | 1h |  |  |
| 113 | 1.3.1.3.2.3 | 重新定义验收标准 | manual | 1h | 2018-12-31 19:00 A | 2018-12-31 20:00 A | 112 | 100% |  |  |  |  |  | 叶柏成 | 1h | 1h |  |  |
| 114 | 1.3.1.3.2.4 | 需求打分 | manual | 1h | 2019-01-01 19:00 A | 2019-01-01 20:00 A | 113 | 100% |  |  |  |  |  | 沈启航 | 1h | 1h | QFD模板 | QFD打分表 |

| ID | WBS | Task | Type | Duration | Start | Finish | Predecessors | Complete | Remaining | Actual start | Actual finish | Constraint | Resources | Work | Actual work | 输出 | 输入 |
| --- | --- | --- | --- | --- | --- | --- | --- | --- | --- | --- | --- | --- | --- | --- | --- | --- | --- |
| 115 | 1.3.1.3.3 | **修改《需求规格说明书》** |  | 1h | 2018-12-30 19:00 | 2018-12-30 20:00 | 114 | 99% | 0h | 2018-12-24 20:00 |  |  | 叶柏成 | 2h | 1h |  |  |
| 116 | 1.3.1.3.3.1 | 编写《需求规格说明书》V0.3.0 | manual | 1h | 2018-12-24 20:00 A | 2018-12-24 21:00 A | 103 | 100% |  |  |  |  | 叶柏成 | 1h | 1h |  |  |
| 117 | 1.3.1.3.4 | **修改《用户手册》** |  | 1h | 2018-12-20 19:00 A | 2018-12-20 20:00 |  | 100% |  |  | 2018-12-23 20:00 |  |  | 1h | 1h |  |  |
| 118 | 1.3.1.3.4.1 | 《用户手册》V0.2.0 | manual | 1d | 2018-12-20 19:00 A | 2018-12-23 20:00 A | 107 | 100% |  |  |  |  | 叶柏成 | 1h | 1h | 《用户手册》V0.2.0 | 《用户手册》V0.1.0 |
| 119 | 1.3.2 | **需求管理** |  | 13d | 2019-01-05 19:00 | 2019-01-18 21:00 | 64, 117 |  |  |  |  |  |  | 8.17h |  |  |  |
| 120 | 1.3.2.1 | 建立一个需求变更控制流程 | manual | 1h | 2019-01-05 19:00 | 2019-01-07 20:30 | 108, 117, 116 |  |  |  |  | start no earlier than 2019-01-05 19:00 | 骆佳俊 | 2h |  | 输出流程 | 需求规格说明书 |
| 121 | 1.3.2.2 | 对需求变更进行影响分析 | manual | 3.5h | 2019-01-06 16:30 | 2019-01-06 20:00 | 120 |  |  |  |  |  | 叶柏成 | 3.5h |  |  |  |
| 122 | 1.3.2.3 | 建立基线并控制需求集合版本 | milestone, manual | 0h | 2019-01-07 20:00 | 2019-01-07 20:00 | 121 |  |  |  |  | start no earlier than 2019-01-07 19:00 | 杨以恒 |  |  | 基线 | 需求规格说明书 |
| 123 | 1.3.2.4 | 维护需求变更的历史记录 | milestone, manual | 0h | 2019-01-08 20:00 | 2019-01-08 20:00 | 122 |  |  |  |  | start no earlier than 2019-01-08 19:00 | 杨以恒 |  |  | 变更日历 | 需求规格说明书 |
| 124 | 1.3.2.5 | 跟踪每个需求的状态 | milestone, manual | 0h | 2019-01-09 20:00 | 2019-01-09 20:00 | 123 |  |  |  |  |  | 徐哲远 |  |  | 状态报告 | 需求规格说明书 |
| 125 | 1.3.2.6 | 维护一个需求可跟踪矩阵 | manual | 1h | 2019-01-10 19:00 | 2019-01-10 20:00 | 124 |  |  |  |  | start no earlier than 2019-01-10 19:00 | 杨以恒 | 1h |  | 需求矩阵 | 需求规格说明书 |
| 126 | 1.3.2.7 | 使用需求管理工具 | manual | 1h | 2019-01-11 19:00 | 2019-01-11 20:00 | 125 |  |  |  |  | start no earlier than 2019-01-11 19:00 | 杨以恒; 骆佳俊; 徐哲远; 沈启航; 叶柏成 | 1.67h |  | 工具报表 | 需求规格说明书 |
| 127 | 1.4 | **项目控制** |  | 300.21d | 2018-09-28 19:00 A | 2019-01-29 20:12 | 63 | 84% | 47.09d |  |  |  |  | 133.05h | 107.05h |  |  |
| 128 | 1.4.1 | **组内评审** |  | 163d | 2018-11-04 19:00 A | 2019-01-08 20:30 | 2, 17 | 82% | 29.64d |  |  |  |  | 27.5h | 22.5h |  |  |
| 129 | 1.4.1.1 | 第一次周末评审 | manual | 0.5h | 2018-11-04 19:00 A | 2018-11-04 19:30 A | 145 | 100% |  |  |  |  | 骆佳俊; 沈启航; 徐哲远; 杨以恒; 叶柏成 | 2.5h | 2.5h | 第一次周末评审 |  |
| 130 | 1.4.1.2 | 第二次周末评审 | manual | 0.5h | 2018-11-11 19:00 A | 2018-11-11 19:30 A | 146 | 100% |  |  |  |  | 骆佳俊; 沈启航; 徐哲远; 杨以恒; 叶柏成 | 2.5h | 2.5h | 第二次周末评审 | 第一次周末评审 |
| 131 | 1.4.1.3 | 第三次周末评审 | manual | 0.5h | 2018-11-18 19:00 A | 2018-11-19 18:30 A | 147 | 100% |  |  |  |  | 骆佳俊; 沈启航; 徐哲远; 杨以恒; 叶柏成 | 2.5h | 2.5h | 第三次周末评审 | 第二次周末评审 |
| 132 | 1.4.1.4 | 第四次周末评审 | manual | 0.5h | 2018-11-25 19:00 A | 2018-11-25 19:30 A | 148 | 100% |  |  |  |  | 骆佳俊; 沈启航; 徐哲远; 杨以恒; 叶柏成 | 2.5h | 2.5h | 第四次周末评审 | 第三次周末评审 |
| 133 | 1.4.1.5 | 第五次周末评审 | manual | 0.5h | 2018-12-02 19:00 A | 2018-12-02 19:30 A | 149 | 100% |  |  |  |  | 骆佳俊; 沈启航; 徐哲远; 杨以恒; 叶柏成 | 2.5h | 2.5h | 第五次周末评审 | 第四次周末评审 |
| 134 | 1.4.1.6 | 第六次周末评审 | manual | 0.5h | 2018-12-09 19:00 A | 2018-12-09 19:30 A | 150 | 100% |  |  |  |  | 骆佳俊; 沈启航; 徐哲远; 杨以恒; 叶柏成 | 2.5h | 2.5h | 第六次周末评审 | 第五次周末评审 |
| 135 | 1.4.1.7 | 第七次周末评审 | manual | 0.5h | 2018-12-16 19:00 A | 2018-12-16 19:30 A | 151 | 100% |  |  |  |  | 骆佳俊; 沈启航; 徐哲远; 杨以恒; 叶柏成 | 2.5h | 2.5h | 第七次周末评审 | 第六次周末评审 |
| 136 | 1.4.1.8 | 第八次周末评审 | manual | 0.5h | 2018-12-23 19:00 A | 2018-12-23 19:30 A | 152 | 100% |  |  |  |  | 骆佳俊; 沈启航; 徐哲远; 杨以恒; 叶柏成 | 2.5h | 2.5h | 第八次周末评审 | 第七次周末评审 |
| 137 | 1.4.1.9 | 第九次周末评审 | manual | 0.5h | 2018-12-30 19:00 A | 2018-12-30 19:30 A | 153 | 100% |  |  |  |  | 骆佳俊; 沈启航; 徐哲远; 杨以恒; 叶柏成 | 2.5h | 2.5h | 第九次周末评审 | 第八次周末评审 |
| 138 | 1.4.1.10 | 第十次周末评审 | manual | 0.5h | 2019-01-06 19:00 | 2019-01-06 19:30 | 154 |  |  |  |  |  | 骆佳俊; 沈启航; 徐哲远; 杨以恒; 叶柏成 | 2.5h |  | 第十次周末评审 | 第九次周末评审 |
| 139 | 1.4.1.11 | 第十一次周末评审 | manual | 0.5h | 2019-01-08 20:00 | 2019-01-08 20:30 | 155 |  |  |  |  |  | 骆佳俊; 沈启航; 徐哲远; 杨以恒; 叶柏成 | 2.5h |  | 第十一次周末评审 | 第十次周末评审 |

| ID | WBS | Task | Type | Duration | Start | Finish | Predecessors | Complete | Remaining | Actual start | Actual finish | Constraint | Resources | Work | Actual work | 输出 | Text2 | Text3 | 输入 |
| --- | --- | --- | --- | --- | --- | --- | --- | --- | --- | --- | --- | --- | --- | --- | --- | --- | --- | --- | --- |
| 140 | 1.4.2 | **小组会议** |  | 300.21d | 2018-09-28 19:00 A | 2019-01-29 20:12 | 2, 17 | 88% | 37.53d |  |  |  |  | 37.55h | 32.55h |  |  |  |  |
| 141 | 1.4.2.1 | 第一次正式会议 | manual | 0.5h | 2018-09-28 19:00 A | 2018-09-28 19:30 A | 4 | 100% |  |  |  |  | 骆佳俊; 沈启航 [50%]; 徐哲远; 杨以恒; 叶柏成 | 2.25h | 2.25h | GIT基本操作的了解及试用 UML的ppt模板选定 | 人员名单 | 会议记录 | 项目要求 |
| 142 | 1.4.2.2 | 第二次正式会议 | manual | 0.5h | 2018-10-08 19:00 A | 2018-10-08 19:30 A | 8, 9, 10, 19, 21, 141 | 100% |  |  |  |  | 骆佳俊; 沈启航; 徐哲远; 杨以恒; 叶柏成 | 2.5h | 2.5h | UMLppt的制作 |  |  | Project学习、Git学习 |
| 143 | 1.4.2.3 | 第三次正式会议 | manual | 0.5h | 2018-10-15 19:00 A | 2018-10-15 19:30 A | 12, 142 | 100% |  |  |  | start no earlier than 2018-10-15 19:00 | 骆佳俊; 沈启航; 徐哲远; 杨以恒; 叶柏成 | 2.5h | 2.5h | UML工具PPT的任务布置 | 翻转课堂UML概述PPT | 会议记录 | UML概述PPT |
| 144 | 1.4.2.4 | 第四次正式会议 | manual | 0.5h | 2018-10-23 19:00 A | 2018-10-23 19:30 A | 13, 143, 159 | 100% |  |  |  |  | 骆佳俊; 沈启航; 徐哲远; 杨以恒; 叶柏成 | 2.5h | 2.5h | 甘特图&WBS 愿景和范围 质量保证计划文档及PPT | 翻转课堂UML工具PPT | 会议记录 | UML工具PPT |
| 145 | 1.4.2.5 | 第五次正式会议 | manual | 0.5h | 2018-10-30 19:00 A | 2018-10-30 19:30 A | 14, 144 | 100% |  |  |  |  | 骆佳俊; 沈启航 [10%]; 徐哲远; 杨以恒; 叶柏成 | 2.05h | 2.05h | 甘特图时间修改 需求项目工程计划PPT，界面原型PPT制作 | 翻转课堂UML基础IPPT | 会议记录 | UML基础IPPT |
| 146 | 1.4.2.6 | 第六次正式会议 | manual | 0.5h | 2018-11-05 19:00 A | 2018-11-05 19:30 A | 129 | 100% |  |  |  |  | 骆佳俊; 沈启航; 徐哲远; 杨以恒; 叶柏成 | 2.5h | 2.5h | 第六次正式会议 |  |  | 第五次正式会议的任务 |
| 147 | 1.4.2.7 | 第七次正式会议 | manual | 0.5h | 2018-11-13 19:00 A | 2018-11-13 19:30 A | 130 | 100% |  |  |  |  | 骆佳俊; 沈启航; 徐哲远; 杨以恒; 叶柏成 [50%] | 2.25h | 2.25h | 第七次正式会议 |  |  | 第六次正式会议 |
| 148 | 1.4.2.8 | 第八次正式会议 | manual | 0.5h | 2018-11-20 19:00 A | 2018-11-20 19:30 A | 147, 54, 131 | 100% |  |  |  |  | 骆佳俊; 沈启航; 徐哲远; 杨以恒; 叶柏成 | 2.5h | 2.5h | 第八次正式会议 |  |  | 第七次会议布置的任务 |
| 149 | 1.4.2.9 | 第九次正式会议 | manual | 0.5h | 2018-11-27 19:00 A | 2018-11-27 19:30 A | 148, 157, 132 | 100% |  |  |  |  | 骆佳俊; 沈启航; 徐哲远; 杨以恒; 叶柏成 | 2.5h | 2.5h | 第九次正式会议 |  |  | 第八次会议布置的任务 |
| 150 | 1.4.2.10 | 第十次正式会议 | manual | 0.5h | 2018-12-04 19:00 A | 2018-12-04 19:30 A | 168, 133 | 100% |  |  |  |  | 骆佳俊; 沈启航; 徐哲远; 杨以恒; 叶柏成 | 2.5h | 2.5h | 第十次正式会议 |  |  | 第九次正式会议的任务 |
| 151 | 1.4.2.11 | 第十一次正式会议 | manual | 0.5h | 2018-12-11 19:00 A | 2018-12-11 19:30 A | 150, 134 | 100% |  |  |  |  | 骆佳俊 [50%]; 徐哲远; 沈启航; 杨以恒; 叶柏成 | 2.25h | 2.25h | 第十一次正式会议 |  |  | 第十次正式会议的任务 |
| 152 | 1.4.2.12 | 第十二次正式会议 | manual | 0.5h | 2018-12-18 19:00 A | 2018-12-18 19:30 A | 151, 135 | 100% |  |  |  |  | 骆佳俊; 徐哲远; 沈启航; 杨以恒; 叶柏成 [50%] | 2.25h | 2.25h | 第十二次正式会议 |  |  | 第十一次正式会议的任务 |
| 153 | 1.4.2.13 | 第十三次正式会议 | manual | 0.5h | 2018-12-25 19:00 A | 2018-12-25 19:30 A | 152, 136 | 100% |  |  |  |  | 沈启航; 徐哲远; 叶柏成 [50%]; 骆佳俊 | 1.75h | 1.75h | 第十三次正式会议 |  |  | 第十二次正式会议的任务 |
| 154 | 1.4.2.14 | 第十四次正式会议 | manual | 0.5h | 2019-01-01 19:00 A | 2019-01-01 19:30 A | 153, 137 | 100% |  |  |  |  | 骆佳俊; 徐哲远; 沈启航; 杨以恒; 叶柏成 [50%] | 2.25h | 2.25h | 第十四次正式会议 |  |  | 第十三次正式会议的任务 |
| 155 | 1.4.2.15 | 第十五次正式会议 | manual | 0.5h | 2019-01-08 19:00 | 2019-01-08 19:30 | 154, 138 |  |  |  |  |  | 沈启航; 徐哲远; 叶柏成; 杨以恒; 骆佳俊 | 2.5h |  | 第十五次正式会议 |  |  | 第十四次正式会议的任务 |
| 156 | 1.4.2.16 | 第十六次正式会议 | manual | 0.5h | 2019-01-15 19:00 | 2019-01-15 19:30 |  |  |  |  |  |  | 沈启航; 徐哲远; 叶柏成; 杨以恒; 骆佳俊 | 2.5h |  |  |  |  |  |
| 157 | 1.4.3 | **客户用户访谈系列** |  | 1d | 2018-11-20 21:00 | 2018-11-20 22:00 | 67 | 99% | 0d | 2018-10-21 19:00 |  |  | 骆佳俊; 沈启航; 徐哲远; 杨以恒; 叶柏成 | 33h | 27h |  |  |  |  |
| 158 | 1.4.3.1 | **客户访谈** |  | 114d | 2018-10-21 19:00 A | 2018-11-21 20:00 A | 67 | 100% |  |  |  |  |  | 12h | 12h |  |  |  |  |
| 159 | 1.4.3.1.1 | 需求咨询 | manual | 1d | 2018-10-21 19:00 A | 2018-10-21 20:00 A | 67 | 100% |  |  |  |  | 骆佳俊; 沈启航; 徐哲远; 杨以恒; 叶柏成 | 6h | 6h | 第九次正式会议 |  |  | 《愿景与范围》 |
| 160 | 1.4.3.1.2 | 愿景与范围访谈 | manual | 1d | 2018-11-21 19:00 A | 2018-11-21 20:00 A | 159 | 100% |  |  |  |  | 骆佳俊; 沈启航; 徐哲远; 杨以恒; 叶柏成 | 6h | 6h |  |  |  | 《愿景与范围》文档 |
| 161 | 1.4.3.2 | **用户访谈** |  | 1d | 2018-12-05 19:00 A | 2018-12-05 20:00 | 67 | 100% |  |  | 2018-12-22 20:00 |  |  | 10h | 10h |  |  |  |  |
| 162 | 1.4.3.2.1 | 教师用户功能访谈 | manual | 1h | 2018-12-05 19:00 A | 2018-12-05 20:00 A | 67 | 100% |  |  |  |  | 骆佳俊; 沈启航; 徐哲远; 杨以恒; 叶柏成 | 5h | 5h | 教师用户功能点 |  |  | 界面原型、愿景与范围文档和教师上下文图 |
| 163 | 1.4.3.2.2 | 管理员用户功能访谈 | manual | 1h | 2018-12-22 19:00 A | 2018-12-22 20:00 A |  | 100% |  |  |  |  | 骆佳俊; 沈启航; 徐哲远; 杨以恒; 叶柏成 | 5h | 5h |  |  |  |  |
| 164 | 1.4.3.3 | JAD会议 | manual | 1d | 2019-01-04 19:00 A | 2019-01-04 20:00 A |  | 100% |  |  |  |  | 骆佳俊; 沈启航; 徐哲远; 杨以恒; 叶柏成 | 5h | 5h |  |  |  |  |

Notes:
- 162: 1、核对附件中目前为教师定下的功能点，是否需要增加、删除、修改？ / 2、为需求定义优先级，看看哪些功能比较重要，哪些可以舍弃，哪些可以之后再实现？ / 3、教师简介由管理员维护还是教师维护？ / 4、给教师提供的作业点评功能具体是怎么样的，是打分制还是优良评级制？ / 5、教师对作业完成情况的跟踪具体是什么样的形式？

| ID | WBS | Task | Type | Duration | Start | Finish | Predecessors | Complete | Remaining | Actual start | Actual finish | Resources | Work | Actual work | 输出 | 输入 |
| --- | --- | --- | --- | --- | --- | --- | --- | --- | --- | --- | --- | --- | --- | --- | --- | --- |
| 165 | 1.4.4 | **客户评审** |  | 163d | 2018-11-04 19:00 | 2019-01-08 20:30 | 33 | 67% | 54.33d | 2018-11-09 19:00 |  |  | 30h | 20h |  |  |
| 166 | 1.4.4.1 | **《需求工程项目计划》评审** |  | 120d | 2018-11-09 19:00 A | 2018-12-07 20:00 A |  | 100% |  |  |  |  | 15h | 15h |  |  |
| 167 | 1.4.4.1.1 | 《需求工程计划》第一次评审 | manual | 1d | 2018-11-09 19:00 A | 2018-11-09 20:00 A | 146 | 100% |  |  |  | 骆佳俊; 沈启航; 徐哲远; 杨以恒; 叶柏成 | 5h | 5h | 《需求工程计划》第一次评审结果 | 需求工程计划 |
| 168 | 1.4.4.1.2 | 《需求工程计划》第二次评审 | manual | 1d | 2018-11-28 19:00 A | 2018-11-28 20:00 A | 160, 167 | 100% |  |  |  | 骆佳俊; 沈启航; 徐哲远; 杨以恒; 叶柏成 | 5h | 5h | 《需求工程计划》第二次评审结果 | 需求工程计划 |
| 169 | 1.4.4.1.3 | 《需求工程计划》第三次评审 | manual | 128d | 2018-12-07 19:00 A | 2018-12-07 20:00 A | 168 | 100% |  |  |  | 骆佳俊; 沈启航; 徐哲远; 杨以恒; 叶柏成 | 5h | 5h | 《需求工程计划》第三次评审结果 | 需求工程计划 |
| 170 | 1.4.4.2 | 《软件需求规格说明书》评审 | milestone, manual | 1d | 2019-01-02 19:00 A | 2019-01-02 20:00 A | 169 | 100% |  |  |  | 骆佳俊; 沈启航; 徐哲远; 杨以恒; 叶柏成 | 5h | 5h |  |  |
| 171 | 1.4.4.3 | 《需求变更管理》评审 | manual | 1h | 2019-01-09 19:00 | 2019-01-09 20:00 | 170 |  |  |  |  | 骆佳俊; 沈启航; 徐哲远; 杨以恒; 叶柏成 | 5h |  |  |  |
| 172 | 1.4.4.4 | 《需求工程项目收尾》评审 | manual | 1d? | 2019-01-09 20:00 | 2019-01-09 21:00 | 171 |  |  |  |  | 骆佳俊; 沈启航; 徐哲远; 杨以恒; 叶柏成 | 5h |  |  |  |
| 173 | 1.4.5 | **团队建设** |  | 1h | 2018-12-07 20:00 | 2018-12-07 21:00 | 2, 17 | 100% |  | 2018-12-06 21:00 | 2018-12-06 22:00 |  | 5h | 5h |  | 需求工程计划评审 |
| 174 | 1.4.5.1 | 第一次地锅鸡团建 | manual | 1d | 2018-12-06 21:00 A | 2018-12-06 22:00 A | 2, 17 | 100% |  |  |  | 骆佳俊; 沈启航; 徐哲远; 杨以恒; 叶柏成 | 5h | 5h |  |  |
| 175 | 1.5 | **项目结尾** |  | 24.21d? | 2019-01-13 18:00 | 2019-01-31 20:12 | 128, 157, 165, 140, 162, 126, 63, 174, 163, 169, 155 |  |  |  |  |  | 31h |  |  |  |
| 176 | 1.5.1 | **汇总文档** |  | 0d | 2019-01-14 19:00 | 2019-01-14 19:00 | 126, 63, 139, 172SS |  |  |  |  | 徐哲远 |  |  | 汇总文档 | 需求规格说明书&需求工程计划书&项目章程 |
| 177 | 1.5.1.1 | 《汇总文档》 | milestone, manual | 0h | 2019-01-13 18:00 | 2019-01-13 18:00 | 155 |  |  |  |  | 骆佳俊; 沈启航; 徐哲远; 杨以恒; 叶柏成 |  |  | 总评结果 | 汇总文档 |
| 178 | 1.5.2 | 项目总评 | manual | 1h | 2019-01-14 20:00 | 2019-01-14 21:00 | 176, 177 |  |  |  |  | 骆佳俊; 沈启航; 徐哲远; 叶柏成; 杨以恒 | 5h |  | 总评结果 | 需求规格说明书&需求工程计划书&项目章程 |
| 179 | 1.5.3 | 项目相关文档修改 | manual | 1h | 2019-01-15 20:00 | 2019-01-15 21:00 | 178 |  |  |  |  | 骆佳俊; 沈启航; 徐哲远; 杨以恒; 叶柏成 | 5h |  |  |  |
| 180 | 1.5.4 | **《项目总结报告》** |  | 2h | 2019-01-14 20:00 | 2019-01-15 21:00 | 178 |  |  |  |  | 杨以恒; 沈启航; 骆佳俊; 徐哲远; 叶柏成 | 15h |  |  | 评审结果 |
| 181 | 1.5.4.1 | 《项目总结报告》评审修改 | manual | 1h | 2019-01-14 20:00 | 2019-01-14 21:00 | 179 |  |  |  |  | 杨以恒; 沈启航; 骆佳俊; 徐哲远; 叶柏成 | 5h |  | 项目总结报告修订 | 评审结果 |
| 182 | 1.5.5 | 散伙饭 | manual | 2d? | 2019-01-29 20:12 | 2019-01-31 20:12 | 180 |  |  |  |  | 杨以恒; 沈启航; 骆佳俊; 徐哲远; 叶柏成 | 6h |  |  | 评审结束 |
